Schedule from MS Project, 2023-11-13 to 2023-12-21, status date 2023-12-13, 20 hours a day, costs in €, A marks actual dates.

## Calendars

- Calendario EtsiiMarkt: Mon-Fri 16:00-20:00; Sat-Sun off. Exceptions (off unless hours are given): 2023-12-06 (Día de la Constitución), 2023-12-08 (Día de la Inmaculada Concepción).

## Resources

| Resource | Group | Rate |
| --- | --- | --- |
| Isabel | Ingeniero de Software | 15 |
| Diego | Ingeniero de Software | 15 |
| Fausto | Ingeniero de Software | 15 |
| Juan Luis | Ingeniero de Software | 15 |
| Antonio | Ingeniero de Software | 15 |

## Schedule

| ID | WBS | Task | Type | Duration | Start | Finish | Predecessors | Complete | Actual finish | Baseline start | Baseline finish | Baseline duration | Baseline 1 start | Baseline 1 finish | Constraint | Resources | Work | Actual work | Cost | Baseline cost | Actual cost |
| --- | --- | --- | --- | --- | --- | --- | --- | --- | --- | --- | --- | --- | --- | --- | --- | --- | --- | --- | --- | --- | --- |
| 1 | 1 | **Primera iteración** |  | 1.15d | 2023-11-13 A | 2023-11-20 A |  | 100% |  | 2023-11-13 | 2023-12-21 | 5.4d? | 2023-11-13 | 2023-12-19 |  |  | 81.5h | 81.5h | 1,222.5 | 4,905 | 1,222.5 |
| 2 | 1.1 | Diseño y maquetado |  | 3.3h | 2023-11-13 A | 2023-11-13 A |  | 100% |  | 2023-11-13 | 2023-11-13 | 3.3h | 2023-11-13 | 2023-11-13 |  | Fausto; Isabel; Juan Luis | 9.9h | 9.9h | 148.5 | 148.5 | 148.5 |
| 3 | 1.2 | Preparación del entorno de trabajo |  | 5h | 2023-11-13 A | 2023-11-14 A |  | 100% |  | 2023-11-13 | 2023-11-14 | 5h | 2023-11-13 | 2023-11-14 |  | Antonio; Diego | 10h | 10h | 150 | 150 | 150 |
| 4 | 1.3 | Implementación de vistas |  | 3.3h | 2023-11-13 A | 2023-11-14 A | 2 | 100% |  | 2023-11-13 | 2023-11-14 | 3.3h | 2023-11-13 | 2023-11-14 |  | Fausto; Isabel | 6.6h | 6.6h | 99 | 99 | 99 |
| 5 | 1.4 | Preparación de la base de datos |  | 1h | 2023-11-14 A | 2023-11-14 A | 3 | 100% |  | 2023-11-14 | 2023-11-14 | 1h | 2023-11-14 | 2023-11-14 |  | Antonio | 1h | 1h | 15 | 15 | 15 |
| 6 | 1.5 | Gestión de productos |  | 9.5h | 2023-11-14 A | 2023-11-16 A | 5 | 100% |  | 2023-11-14 | 2023-11-16 | 9.5h | 2023-11-14 | 2023-11-16 |  | Antonio; Diego; Juan Luis | 28.5h | 28.5h | 427.5 | 427.5 | 427.5 |
| 7 | 1.6 | Home |  | 1.5h | 2023-11-14 A | 2023-11-15 A | 4 | 100% |  | 2023-11-14 | 2023-11-15 | 1.5h | 2023-11-14 | 2023-11-15 |  | Fausto; Isabel | 3h | 3h | 45 | 45 | 45 |
| 8 | 1.7 | Catálogo de productos | manual | 7.5h | 2023-11-16 A | 2023-11-20 A | 6 | 100% |  | 2023-11-16 | 2023-11-20 | 7.5h | 2023-11-16 | 2023-11-20 |  | Antonio; Diego; Juan Luis | 22.5h | 22.5h | 337.5 | 337.5 | 337.5 |
| 9 | 1.8 | Testing iteración 1 | milestone | 0h | 2023-11-20 A | 2023-11-20 A | 8, 7 | 100% |  | 2023-11-20 | 2023-11-20 | 0h | 2023-11-20 | 2023-11-20 |  | Antonio; Fausto; Diego; Juan Luis; Isabel |  |  |  |  |  |
| 10 | 1.9 | Segunda reunión de calidad | milestone | 0h | 2023-11-20 A | 2023-11-20 A | 9 | 100% |  | 2023-11-20 | 2023-11-20 | 0h | 2023-11-20 | 2023-11-20 |  | Isabel; Juan Luis; Diego; Fausto; Antonio |  |  |  |  |  |
| 11 | 1.10 | Fin de la primera iteración | milestone | 0d | 2023-11-20 A | 2023-11-20 A | 10 | 100% |  | 2023-11-20 | 2023-11-20 | 0d | 2023-11-20 | 2023-11-20 | must finish on 2023-11-20 |  |  |  |  |  |  |
| 12 | 2 | **Segunda iteración** |  | 4.15d? | 2023-11-21 A | 2023-12-19 |  | 100% | 2023-11-29 | 2023-11-21 | 2023-12-19 | 4.15d? | 2023-11-21 | 2023-12-19 |  |  | 101.5h | 101.5h | 1,522.5 | 3,682.5 | 1,522.5 |
| 13 | 2.1 | Correcciones primera iteración | milestone | 0h | 2023-11-21 A | 2023-11-21 A |  | 100% |  | 2023-11-21 | 2023-11-21 | 0h | 2023-11-21 | 2023-11-21 |  |  |  |  |  |  |  |
| 14 | 2.2 | Búsqueda de productos |  | 14h | 2023-11-21 A | 2023-11-24 A | 13 | 100% |  | 2023-11-21 | 2023-11-24 | 14h | 2023-11-30 | 2023-12-04 | start no earlier than 2023-11-21 | Juan Luis | 14h | 14h | 210 | 210 | 210 |
| 15 | 2.3 | Gestión de clientes |  | 10h | 2023-11-21 A | 2023-11-23 A | 13 | 100% |  | 2023-11-21 | 2023-11-23 | 10h | 2023-11-21 | 2023-11-27 |  | Isabel; Diego | 20h | 20h | 300 | 300 | 300 |
| 16 | 2.4 | Gestión de pedidos |  | 10h | 2023-11-21 A | 2023-11-23 A | 13 | 100% |  | 2023-11-21 | 2023-11-23 | 10h | 2023-11-21 | 2023-11-27 |  | Fausto; Antonio | 20h | 20h | 300 | 300 | 300 |
| 17 | 2.5 | Gestión de perfil cliente |  | 7.5h | 2023-11-24 A | 2023-11-28 A | 15SS | 100% |  | 2023-11-24 | 2023-11-28 | 7.5h | 2023-11-21 | 2023-11-29 | start no earlier than 2023-11-24 | Juan Luis; Fausto [50%]; Antonio [50%]; Isabel [50%]; Diego [50%] | 14.7h | 14.7h | 220.5 | 220.5 | 220.5 |
| 18 | 2.6 | Registro de clientes y login |  | 3.7h | 2023-11-23 A | 2023-11-24 A | 15 | 100% |  | 2023-11-23 | 2023-11-24 | 3.7h | 2023-11-28 | 2023-11-28 |  | Fausto; Antonio; Isabel; Diego | 14.8h | 14.8h | 222 | 222 | 222 |
| 19 | 2.7 | Testing iteración 2 | manual | 2h | 2023-11-28 A | 2023-11-28 A | 17, 18, 16 | 100% |  | 2023-11-28 | 2023-11-28 | 2h | 2023-11-29 | 2023-11-30 |  | Isabel; Diego; Antonio; Juan Luis; Fausto | 10h | 10h | 150 | 150 | 150 |
| 20 | 2.8 | Tercera reunión de calidad | manual | 2h | 2023-11-29 A | 2023-11-29 A | 19 | 100% |  | 2023-11-29 | 2023-11-29 | 2h | 2023-11-30 | 2023-11-30 |  | Isabel; Antonio; Fausto; Juan Luis; Diego | 8h | 8h | 120 | 120 | 120 |
| 21 | 2.9 | Fin de la segunda iteración | milestone | 0d | 2023-11-29 A | 2023-11-29 A | 20 | 100% |  | 2023-11-29 | 2023-11-29 | 0d | 2023-11-30 | 2023-11-30 | must finish on 2023-11-29 |  |  |  |  |  |  |
| 22 | 3 | **Tercera iteración** |  | 3.15d? | 2023-11-30 A | 2023-12-21 |  | 100% | 2023-12-13 | 2023-11-30 | 2023-12-21 | 3.15d? |  |  |  |  | 92h | 92h | 1,380 | 2,160 | 1,380 |
| 23 | 3.1 | Correcciones de la segunda iteración | milestone | 0h | 2023-11-30 A | 2023-11-30 A |  | 100% |  | 2023-11-30 | 2023-11-30 | 2h |  |  |  |  |  |  |  |  |  |
| 24 | 3.2 | Gestión de ventas |  | 2.5h | 2023-11-30 A | 2023-12-01 A | 23 | 100% |  | 2023-11-30 | 2023-12-05 | 12.5h |  |  | finish no earlier than 2023-12-05 | Diego; Antonio | 5h | 5h | 75 | 375 | 75 |
| 25 | 3.3 | Carrito de la compra |  | 10h | 2023-11-30 A | 2023-12-04 A | 23 | 100% |  | 2023-11-30 | 2023-12-04 | 10h |  |  |  | Juan Luis; Fausto | 20h | 20h | 300 | 300 | 300 |
| 26 | 3.4 | Pasarela de pago |  | 8h | 2023-11-30 A | 2023-12-01 A | 23 | 100% |  | 2023-11-30 | 2023-12-04 | 8h |  |  |  | Isabel | 8h | 8h | 120 | 120 | 120 |
| 27 | 3.5 | Opiniones del cliente |  | 5h | 2023-12-01 A | 2023-12-04 A | 23 | 100% |  | 2023-12-11 | 2023-12-13 | 10.5h |  |  | finish no earlier than 2023-12-05 | Antonio | 5h | 5h | 75 | 157.5 | 75 |
| 28 | 3.6 | Gestión de reclamaciones |  | 5h | 2023-11-30 A | 2023-12-01 A | 23 | 100% |  | 2023-12-07 | 2023-12-13 | 15h |  |  |  | Fausto | 5h | 5h | 75 | 225 | 75 |
| 29 | 3.7 | Datos de la empresa |  | 1h | 2023-11-30 A | 2023-11-30 A | 23 | 100% |  | 2023-12-04 | 2023-12-11 | 10.5h |  |  |  | Isabel | 1h | 1h | 15 | 157.5 | 15 |
| 30 | 3.8 | Proceso de compra |  | 5h | 2023-12-04 A | 2023-12-05 A | 25, 26 | 100% |  | 2023-12-04 | 2023-12-12 | 13h |  |  |  | Fausto; Juan Luis; Antonio; Isabel; Diego | 20h | 20h | 300 | 300 | 300 |
| 31 | 3.9 | Testing iteración 3 |  | 2h | 2023-12-05 A | 2023-12-07 A | 24, 27, 28, 29, 30 | 100% |  | 2023-12-14 | 2023-12-14 | 2h |  |  |  | Isabel; Fausto; Diego; Juan Luis; Antonio | 10h | 10h | 150 | 150 | 150 |
| 32 | 3.10 | Cuarta reunión de calidad |  | 2h | 2023-12-07 A | 2023-12-07 A | 31 | 100% |  | 2023-12-14 | 2023-12-14 | 2h |  |  |  | Isabel; Fausto; Antonio; Diego; Juan Luis | 10h | 10h | 150 | 150 | 150 |
| 33 | 3.11 | Correcciones tercera iteración |  | 1.6h | 2023-12-07 A | 2023-12-11 A | 32 | 100% |  | 2023-12-15 | 2023-12-15 | 3h |  |  |  | Antonio; Diego; Juan Luis; Fausto; Isabel | 8h | 8h | 120 | 225 | 120 |
| 34 | 3.12 | Fin de la tercera iteración | milestone | 0d | 2023-12-13 A | 2023-12-13 A |  | 100% |  | 2023-12-13 | 2023-12-13 | 0d |  |  | start no earlier than 2023-12-13 |  |  |  |  |  |  |
